Schedule from OmniPlan, 2017-12-20 to 2017-12-28.

## Resources

| Resource | Group |
| --- | --- |
| 资源 1 | staff |
| 设备 1 | equipment |
| 素材 1 | material |
| 群组 1 | group |
| 贾东坡 | staff |
| 黎杰 | staff |
| 孟详龙 | staff |
| 周游 | staff |

## Schedule

| ID | WBS | Task | Start | Complete | Constraint | Resources | Work | Actual work |
| --- | --- | --- | --- | --- | --- | --- | --- | --- |
| 1 | 1 | **设计** |  |  |  |  |  |  |
| 2 | 1.1 | **数据库设计** |  |  |  |  |  |  |
| 3 | 1.1.1 | 权限、人员、组 | 2017-12-26 | 100% |  | 贾东坡 | 2h | 2h |
| 4 | 1.1.2 | 工单基础信息表 | 2017-12-25 | 100% | start no earlier than 2017-12-19 | 贾东坡 | 2h | 2h |
| 5 | 1.1.3 | 工单应用信息表 | 2017-12-28 | 50% |  | 贾东坡 | 2h | 1h |
| 6 | 1.1.4 | 工单流转信息表 | 2017-12-28 | 50% |  | 贾东坡 | 2h | 1h |
| 7 | 1.1.5 | 工单流转日志表 | 2017-12-22 | 100% | start no earlier than 2017-12-19 | 贾东坡 | 2h | 2h |
| 8 | 1.1.6 | 关闭工单评价表 | 2017-12-22 | 100% | start no earlier than 2017-12-19 | 贾东坡 | 2h | 2h |
| 9 | 1.2 | **功能设计** |  |  | finish no later than 2017-12-20 |  |  |  |
| 10 | 1.2.1 | 业务、审批人、处理人权限与角色 | 2017-12-20 | 100% |  | 贾东坡 | 1h | 1h |
| 11 | 1.2.2 | 元素 | 2017-12-27 | 100% | start no earlier than 2017-12-19 |  | 1h | 1h |
| 12 | 1.2.3 | 复制功能 | 2017-12-26 | 100% | start no earlier than 2017-12-19 |  | 1h | 1h |
| 13 | 1.2.4 | 工单搜索 | 2017-12-26 | 100% | start no earlier than 2017-12-19 |  | 1h | 1h |
| 14 | 1.2.5 | 工单进度显示 | 2017-12-26 | 100% | start no earlier than 2017-12-19 |  | 1h | 1h |
| 15 | 1.2.6 | 任务提醒、通知实现 | 2017-12-26 | 100% | start no earlier than 2017-12-19 |  | 1h | 1h |
| 16 | 1.2.7 | 附件上传 | 2017-12-26 | 100% | start no earlier than 2017-12-19 |  | 1h | 1h |
| 17 | 1.2.8 | 附件下载 | 2017-12-26 | 100% | start no earlier than 2017-12-19 |  | 1h | 1h |
| 18 | 1.3 | 业务流程设计 | 2017-12-22 | 100% |  | 贾东坡 | 8h | 8h |
| 19 | 1.4 | **界面设计** |  |  |  |  |  |  |
| 20 | 1.4.1 | 创建工单 | 2017-12-20 | 100% |  | 贾东坡; 周游 | 4h | 4h |
| 21 | 1.4.2 | 保存工单 | 2017-12-20 | 100% |  | 贾东坡; 周游 | 4h | 4h |
| 22 | 1.4.3 | 修改工单 | 2017-12-20 | 100% |  | 贾东坡; 周游 | 4h | 4h |
| 23 | 1.4.4 | 提交工单 | 2017-12-20 | 100% |  | 贾东坡; 周游 | 4h | 4h |
| 24 | 1.4.5 | 复制工单 | 2017-12-20 | 100% |  | 贾东坡; 周游 | 4h | 4h |
| 25 | 1.4.6 | 关闭工单 | 2017-12-20 | 100% |  | 贾东坡; 周游 | 4h | 4h |
| 26 | 1.4.7 | 查询工单 | 2017-12-20 | 100% |  | 贾东坡; 周游 | 4h | 4h |
| 27 | 1.4.8 | 处理工单 | 2017-12-20 | 100% |  | 贾东坡; 周游 | 4h | 4h |
| 28 | 1.4.9 | 处理反馈工单 | 2017-12-20 | 100% |  | 贾东坡; 周游 | 4h | 4h |
| 29 | 1.4.10 | 系统审批工单 | 2017-12-20 | 100% |  | 贾东坡; 周游 | 4h | 4h |
| 30 | 1.4.11 | 邮件审批工单 | 2017-12-20 | 100% |  | 贾东坡; 周游 | 4h | 4h |

| ID | WBS | Task | Type | Start | Complete | Constraint | Resources | Work | Actual work |
| --- | --- | --- | --- | --- | --- | --- | --- | --- | --- |
| 31 | 2 | **开发** |  |  |  |  |  |  |  |
| 32 | 2.1 | 流程定义 |  | 2017-12-26 | 100% |  | 贾东坡 | 4h | 4h |
| 33 | 2.2 | 流程部署与删除 | milestone | 2017-12-28 |  |  | 贾东坡 |  |  |
| 34 | 2.3 | 流程api | milestone | 2017-12-28 |  |  | 贾东坡 |  |  |
| 35 | 2.4 | 创建与保存工单 |  | 2017-12-22 | 100% |  | 周游 | 8h | 8h |
| 36 | 2.5 | 工单修改与清空 |  | 2017-12-26 | 100% |  | 周游 | 4h | 4h |
| 37 | 2.6 | 工单复制 |  | 2017-12-28 |  |  | 周游 | 8h |  |
| 38 | 2.7 | 工单流转状态实现 |  | 2017-12-27 | 25% |  | 黎杰 | 16h | 4h |
| 39 | 2.8 | 工单流转详情页实现 |  | 2017-12-28 | 6% |  | 黎杰 | 16h | 1h |
| 40 | 2.9 | 业务元素管理 |  | 2017-12-26 | 100% |  | 周游 | 4h | 4h |
| 41 | 2.10 | 工单文件的上传、下载 |  | 2017-12-26 | 100% |  |  | 4h | 4h |
| 42 | 2.11 | 附件加密及附件的存储、获取api |  | 2017-12-28 |  |  | 黎杰 | 8h |  |
| 43 | 2.12 | 查询工单 |  | 2017-12-26 | 100% |  | 周游 | 4h | 4h |
| 44 | 2.13 | 邮件审批工单 |  | 2017-12-26 | 100% |  | 周游 | 4h | 4h |
| 45 | 2.14 | 数据字段表获取实现 |  | 2017-12-22 | 100% | start no earlier than 2017-12-22 |  | 8h | 8h |
| 46 | 2.15 | 待办实现、首页通知？ |  | 2017-12-28 |  |  |  | 8h |  |
| 47 | 2.16 | 消息？ |  | 2017-12-28 |  |  |  | 8h |  |
